# Obra Exemplo — Cronograma replanejado

Schedule from MS Project XML, 2026-07-27 to 2026-12-02.

## Calendars

- Padrão: Mon-Fri 08:00-12:00, 13:00-17:00; Sat-Sun off.

## Schedule

| ID | WBS | Task | Type | Duration | Start | Finish | Predecessors | Complete |
| --- | --- | --- | --- | --- | --- | --- | --- | --- |
| 1 | 01 | **SERVIÇOS INICIAIS** |  | 91d | 2026-07-27 | 2026-11-30 |  | 71% |
| 2 | 01.01 | **Serviços Técnicos** |  | 86d | 2026-08-01 | 2026-11-30 |  | 85% |
| 3 | 01.01.01 | Fiscalização/Acompanhamento/Gerenciamento - ART |  | 86d | 2026-08-01 | 2026-11-30 |  | 85% |
| 4 | 01.02 | **Serviços Preliminares** |  | 5d | 2026-08-01 | 2026-08-07 |  |  |
| 5 | 01.02.01 | Cópias e Plotagens |  | 5d | 2026-08-01 | 2026-08-07 |  |  |
| 6 | 01.02.02 | Seguros |  | 1d | 2026-08-01 | 2026-08-01 |  |  |
| 7 | 01.03 | **Instalações Provisórias** |  | 20d | 2026-08-01 | 2026-08-28 |  |  |
| 8 | 01.03.01 | **Tapumes/Cercas** |  | 5d | 2026-08-24 | 2026-08-28 |  |  |
| 9 | 01.03.01.01 | Execução de pilaretes para tapumes e construções temporárias |  | 2d | 2026-08-24 | 2026-08-25 |  |  |
| 10 | 01.03.01.02 | tapume com telha metalica |  | 5d | 2026-08-24 | 2026-08-28 |  |  |
| 11 | 01.03.02 | Canteiro de Obras Depósitos/Escritórios/Proteção Transeuntes |  | 1d | 2026-08-01 | 2026-08-03 |  |  |
| 12 | 01.03.03 | **Placa de Obra** |  | 1d | 2026-08-01 | 2026-08-03 |  |  |
| 13 | 01.03.03.01 | Placa de sinalizacao de seguranca contra incendio |  | 1d | 2026-08-01 | 2026-08-03 |  |  |
| 14 | 01.03.03.02 | Placa de sinalizacao em chapa de aluminio com pintura refletiva |  | 1d | 2026-08-01 | 2026-08-03 |  |  |
| 15 | 01.03.04 | Ligação Provisória de Água |  | 1d | 2026-08-01 | 2026-08-03 |  |  |
| 16 | 01.03.05 | Ligação Provisória de Energia |  | 1d | 2026-08-01 | 2026-08-03 |  |  |
| 17 | 01.04 | Mobilização do canteiro |  | 5d | 2026-07-27 | 2026-07-31 |  | 100% |
| 18 | 01.05 | Aprovação do projeto na prefeitura | milestone | 0d | 2026-07-31 | 2026-07-31 | 17 |  |
| 19 | 02 | **ADMINISTRAÇÃO DA OBRA E DESPESAS GERAIS** |  | 8d | 2026-08-01 | 2026-08-12 |  |  |
| 20 | 02.01 | **Administração da Obra e Despesas Gerais** |  | 8d | 2026-08-01 | 2026-08-12 |  |  |
| 21 | 02.01.01 | Consumos Combustíveis e Lubrificantes |  | 8d | 2026-08-01 | 2026-08-12 |  |  |
| 22 | 02.01.02 | Consumos de Água e Luz |  | 2d | 2026-08-01 | 2026-08-04 |  |  |
| 23 | 02.01.03 | EPI/EPC |  | 1d | 2026-08-01 | 2026-08-03 |  |  |
| 24 | 02.01.04 | PCMAT/PCMSO |  | 1d | 2026-08-01 | 2026-08-03 |  |  |

| ID | WBS | Task | Duration | Start | Finish | Predecessors | Complete |
| --- | --- | --- | --- | --- | --- | --- | --- |
| 25 | 03 | **TRABALHOS EM TERRA** | 16d | 2026-08-01 | 2026-08-24 |  | 11% |
| 26 | 03.01 | **Trabalhos em Terra** | 16d | 2026-08-01 | 2026-08-24 |  | 11% |
| 27 | 03.01.01 | Terraplanagem nível +1,19 | 2d | 2026-08-01 | 2026-08-04 | 17 | 100% |
| 28 | 03.01.02 | Compactação de Solo | 2d | 2026-08-04 | 2026-08-05 | 27 |  |
| 29 | 03.01.03 | Bota-Fora (Transporte De Material Excedente) | 14d | 2026-08-05 | 2026-08-24 | 28 |  |
| 30 | 04 | **FUNDAÇÕES** | 86d | 2026-08-05 | 2026-12-02 |  | 5% |
| 31 | 04.01 | **LOCAÇÃO** | 5d | 2026-08-28 | 2026-09-03 |  |  |
| 32 | 04.01.01 | Locação da Obra (Gabarito) | 5d | 2026-08-28 | 2026-09-03 |  |  |
| 33 | 04.02 | **Estaca Hélice Contínua** | 10d | 2026-09-04 | 2026-09-17 |  |  |
| 34 | 04.02.01 | Estaca Hélice Contínua - 6 x C25 - 10m | 2d | 2026-09-04 | 2026-09-07 | 32FS+1d |  |
| 35 | 04.02.02 | Estaca Hélice Contínua - 69 x C30 - 10m | 3d | 2026-09-10 | 2026-09-14 | 34 |  |
| 36 | 04.02.03 | Estaca Hélice Contínua - 9 x C30 - 6m | 4d | 2026-09-14 | 2026-09-17 | 35 |  |
| 37 | 04.03 | **arrasamentos de estacas** | 10d | 2026-09-12 | 2026-09-27 |  |  |
| 38 | 04.03.01 | Arrasamento Mecânico de Estacas | 10d | 2026-09-12 | 2026-09-27 | 36 |  |
| 39 | 04.04 | **BLOCO DE CORoAMENTO e viga baldrame** | 86d | 2026-08-05 | 2026-12-02 |  |  |
| 40 | 04.04.01 | Lastro de Concreto Magro | 7d | 2026-11-18 | 2026-11-26 | 46 |  |
| 41 | 04.04.02 | Escavação Mecanizada | 2d | 2026-09-29 | 2026-09-30 | 38 |  |
| 42 | 04.04.03 | **Formas** | 46d | 2026-09-30 | 2026-12-02 |  |  |
| 43 | 04.04.03.01 | Fabricação | 9d | 2026-09-30 | 2026-10-12 | 41 |  |
| 44 | 04.04.03.02 | Fabricação | 9d | 2026-10-12 | 2026-10-22 | 43 |  |
| 45 | 04.04.03.03 | Fabricação | 8d | 2026-10-22 | 2026-11-02 | 44 |  |
| 46 | 04.04.03.04 | Fabricação | 13d | 2026-11-02 | 2026-11-18 | 45 |  |
| 47 | 04.04.03.05 | Fabricação | 11d | 2026-11-18 | 2026-12-02 | 46 |  |
| 48 | 04.04.04 | Concretagem | 2d | 2026-08-05 | 2026-08-06 |  |  |

| ID | WBS | Task | Duration | Start | Finish | Predecessors | Complete |
| --- | --- | --- | --- | --- | --- | --- | --- |
| 49 | 04.04.05 | **Armação** | 5d | 2026-08-05 | 2026-08-11 |  |  |
| 50 | 04.04.05.01 | Armação de estruturas diversas de concreto armado | 5d | 2026-08-05 | 2026-08-11 |  |  |
| 51 | 04.04.05.02 | Armação de estruturas diversas de concreto armado | 4d | 2026-08-05 | 2026-08-10 |  |  |
| 52 | 04.05 | **CONTENÇÃO VIZINHO** | 14d | 2026-08-06 | 2026-08-25 |  | 40% |
| 53 | 04.05.01 | Escoramentos de Terrenos de Vizinhos | 14d | 2026-08-06 | 2026-08-25 | 48 | 40% |
| 54 | 04.06 | **PROVAS DE CARGA EM ESTACAS** | 9d | 2026-09-04 | 2026-09-16 |  |  |
| 55 | 04.06.01 | Provas de Cargas em Estacas | 9d | 2026-09-04 | 2026-09-16 | 34SS |  |
| 56 | 04.07 | **impermeabilizações** | 4d | 2026-08-25 | 2026-08-28 |  |  |
| 57 | 04.07.01 | Impermeabilização de Baldrames com Manta Asfáltica | 3d | 2026-08-25 | 2026-08-27 | 53 |  |
| 58 | 04.07.02 | Impermeabilização de Muro com Manta Asfáltica | 2d | 2026-08-27 | 2026-08-28 | 57 |  |
